Schedule from MS Project, 2025-02-18 to 2025-06-12, costs in р..
Microsoft

## Calendars

- Стандартный: Mon-Fri 09:00-13:00, 14:00-18:00; Sat-Sun off.

## Resources

| Resource | Rate |
| --- | --- |
| Руководитель проекта(STL) | 4000 |
| Бизнес-аналитик | 1000 |
| Front-end разработчик | 1250 |
| Back-end разработчик | 1250 |
| DevOps инженер | 1250 |
| Тестировщик | 800 |
| Контент-менеджер | 700 |
| Системный администратор | 900 |
| CMS(1С-Битрикс) | 40000 |
| CRM(Битрикс24) | 45000 |
| БД(PostgreSQL) | 10000 |
| Серверное ПО(Linux) | 10000 |

## Schedule

| ID | WBS | Task | Duration | Start | Finish | Predecessors | Total slack | Constraint | Resources | Work | Cost |
| --- | --- | --- | --- | --- | --- | --- | --- | --- | --- | --- | --- |
| 1 | 1 | **Computer Shop** | 82.38d | 2025-02-18 | 2025-06-12 |  | 0d |  |  | 619h | 895,350 |
| 2 | 1.1 | Общение с заказчиком | 3d | 2025-02-18 | 2025-02-20 |  | 0d | start no earlier than 2025-02-18 | Руководитель проекта(STL) [50%]; Бизнес-аналитик [50%] | 17h | 53,000 |
| 3 | 1.2 | Поиск и выбор программного обеспечения (CMS, CRM, БД и др.) | 2d | 2025-02-21 | 2025-02-24 | 2 | 0d |  | Бизнес-аналитик | 16h | 16,000 |
| 4 | 1.3 | **Составление технического задания(ТЗ)** | 10.62d | 2025-02-25 | 2025-03-11 | 3 | 0d |  |  | 79h | 134,000 |
| 5 | 1.3.1 | Составление проектных документов | 3d | 2025-02-25 | 2025-02-28 |  | 0d |  | Бизнес-аналитик | 24h | 24,000 |
| 6 | 1.3.2 | Формирование функциональных требований | 1d | 2025-02-28 | 2025-03-03 | 5 | 0d |  | Back-end разработчик [50%]; Бизнес-аналитик [50%] | 7h | 8,000 |
| 7 | 1.3.3 | Формирование нефункциональных требований | 1d | 2025-03-03 | 2025-03-04 | 6 | 0d |  | Бизнес-аналитик | 8h | 8,000 |
| 8 | 1.3.4 | Составление макетов интерфейсов | 3d | 2025-03-04 | 2025-03-07 | 7 | 0d |  | Front-end разработчик | 24h | 30,000 |
| 9 | 1.3.5 | Формирование списка задач в WEEEK | 2d | 2025-03-07 | 2025-03-11 | 8 | 0d |  | Руководитель проекта(STL) | 16h | 64,000 |
| 10 | 1.4 | **Спринт 1: Разработка базовой инфраструктуры** | 12.62d | 2025-03-11 | 2025-03-28 | 4 | 0d |  |  | 96h | 116,400 |
| 11 | 1.4.1 | **Подготовка окружения** | 3.25d | 2025-03-11 | 2025-03-14 |  | 0d |  |  | 24h | 37,200 |
| 12 | 1.4.1.1 | Создание приватного репозитория в GitLab | 1d | 2025-03-11 | 2025-03-12 |  | 0d |  | DevOps инженер | 8h | 10,000 |
| 13 | 1.4.1.2 | Установка серверного и базового ПО (сервер, БД, CMS) | 2d | 2025-03-12 | 2025-03-14 | 12 | 0d |  | DevOps инженер [50%]; Системный администратор [50%]; Серверное ПО(Linux) | 16h | 27,200 |
| 14 | 1.4.2 | Разработка API для связи модулей | 5d | 2025-03-14 | 2025-03-21 | 13 | 0d |  | Back-end разработчик | 40h | 50,000 |
| 15 | 1.4.3 | Тестирование и отладка | 3d | 2025-03-24 | 2025-03-27 | 14 | 0d |  | Тестировщик | 24h | 19,200 |
| 16 | 1.4.4 | Формирование промежуточной сборки | 1d | 2025-03-27 | 2025-03-28 | 15 | 0d |  | DevOps инженер | 8h | 10,000 |
| 17 | 1.5 | **Спринт 2: Разработка ключевых функций интернет-магазина** | 21.75d | 2025-03-28 | 2025-04-28 | 10 | 0d |  |  | 168h | 239,200 |
| 18 | 1.5.1 | Разработка функционала каталога товаров | 5d | 2025-03-28 | 2025-04-04 |  | 0d |  | Back-end разработчик [50%]; Front-end разработчик [50%] | 40h | 50,000 |
| 19 | 1.5.2 | Разработка интерфейса корзины и оформления заказа | 4d | 2025-04-04 | 2025-04-10 | 18 | 0d |  | Front-end разработчик | 32h | 40,000 |
| 20 | 1.5.3 | Интеграция с платежными системами | 5d | 2025-04-10 | 2025-04-17 | 19 | 0d |  | Back-end разработчик | 40h | 50,000 |
| 21 | 1.5.4 | Интеграция с логистическими сервисами | 3d | 2025-04-17 | 2025-04-22 | 20 | 0d |  | Back-end разработчик; CMS(1С-Битрикс) | 24h | 70,000 |
| 22 | 1.5.5 | Тестирование и отладка | 3d | 2025-04-22 | 2025-04-25 | 21 | 0d |  | Тестировщик | 24h | 19,200 |
| 23 | 1.5.6 | Формирование промежуточной сборки | 1d | 2025-04-25 | 2025-04-28 | 22 | 0d |  | DevOps инженер | 8h | 10,000 |
| 24 | 1.6 | **Спринт 3: Автоматизация процессов и обучения персонала** | 16.62d | 2025-04-29 | 2025-05-21 | 17 | 0d |  |  | 128h | 194,200 |
| 25 | 1.6.1 | Разработка функционала управления заказами | 5d | 2025-04-29 | 2025-05-06 |  | 0d |  | Back-end разработчик | 40h | 50,000 |
| 26 | 1.6.2 | Интеграция с CRM и аналитическими сервисами | 4d | 2025-05-06 | 2025-05-12 | 25 | 0d |  | Back-end разработчик; CRM(Битрикс24) | 32h | 85,000 |
| 27 | 1.6.3 | Разработка модуля отчетности | 3d | 2025-05-12 | 2025-05-15 | 26 | 0d |  | Back-end разработчик | 24h | 30,000 |
| 28 | 1.6.4 | Тестирование и отладка | 3d | 2025-05-15 | 2025-05-20 | 27 | 0d |  | Тестировщик | 24h | 19,200 |
| 29 | 1.6.5 | Формирование промежуточной сборки | 1d | 2025-05-20 | 2025-05-21 | 28 | 0d |  | DevOps инженер | 8h | 10,000 |

| ID | WBS | Task | Duration | Start | Finish | Predecessors | Total slack | Resources | Work | Cost |
| --- | --- | --- | --- | --- | --- | --- | --- | --- | --- | --- |
| 30 | 1.7 | **Спринт 4: Завершение разработки и запуск** | 15.75d | 2025-05-21 | 2025-06-12 | 24 | 0d |  | 115h | 142,550 |
| 31 | 1.7.1 | Разработка функционала сохранения истории заказов | 4d | 2025-05-21 | 2025-05-27 |  | 0d | Back-end разработчик | 32h | 40,000 |
| 32 | 1.7.2 | Оптимизация производительности | 2d | 2025-05-27 | 2025-05-29 | 31 | 0d | Back-end разработчик [50%]; DevOps инженер [50%] | 11h | 13,750 |
| 33 | 1.7.3 | Финальное тестирование и отладка | 4d | 2025-05-29 | 2025-06-04 | 32 | 0d | Тестировщик | 32h | 25,600 |
| 34 | 1.7.4 | Формирование финальной сборки | 2d | 2025-06-05 | 2025-06-09 | 33 | 0d | DevOps инженер | 16h | 20,000 |
| 35 | 1.7.5 | Оформление инструкции для пользователя | 2d | 2025-06-09 | 2025-06-11 | 34 | 0d | Контент-менеджер | 16h | 11,200 |
| 36 | 1.7.6 | Запуск интернет-магазина | 1d | 2025-06-11 | 2025-06-12 | 35 | 0d | Руководитель проекта(STL) | 8h | 32,000 |
